# Visualización ampliada de edificios

Schedule from ProjectLibre, 2016-12-06 to 2017-07-06, 6 hours a day.

## Calendars

- Estandar: Mon off; Tue 16:30-21:00; Wed off; Thu 16:30-21:00; Fri-Sat off; Sun 10:00-14:00, 16:00-21:00. Exceptions (off unless hours are given): 2017-02-26.

## Resources

| Resource |
| --- |
| No Asignado |
| Roi |

## Schedule

| ID | WBS | Task | Duration | Start | Finish | Predecessors | Baseline start | Baseline finish | Total slack | Constraint | Resources |
| --- | --- | --- | --- | --- | --- | --- | --- | --- | --- | --- | --- |
| 1 | 1 | **Proyecto** | 89.58d? | 2016-12-06 | 2017-07-06 |  | 2016-12-06 | 2017-08-01 |  |  |  |
| 2 | 1.1 | **Gestión del proyecto** | 5.42d? | 2016-12-06 | 2016-12-18 |  | 2016-12-06 | 2016-12-18 | 2600d |  |  |
| 3 | 1.1.1 | Gestión del alcance | 1.33d? | 2016-12-06 | 2016-12-08 |  | 2016-12-06 | 2016-12-08 | 2600d |  | Roi |
| 4 | 1.1.2 | Eleccion ciclo de vida | 0.08d? | 2016-12-08 | 2016-12-08 | 3 | 2016-12-08 | 2016-12-08 | 2600d |  | Roi |
| 5 | 1.1.3 | Gestión del tiempo | 1d? | 2016-12-08 | 2016-12-11 | 4 | 2016-12-08 | 2016-12-11 | 2600d |  | Roi |
| 6 | 1.1.4 | Gestión de los costes | 1d? | 2016-12-11 | 2016-12-13 | 5 | 2016-12-11 | 2016-12-13 | 2600d |  | Roi [50%] |
| 7 | 1.1.5 | Gestión de la configuración | 1d? | 2016-12-13 | 2016-12-15 | 6 | 2016-12-13 | 2016-12-15 | 2600d |  | Roi [50%] |
| 8 | 1.1.6 | Gestion de riesgos | 1d? | 2016-12-15 | 2016-12-18 | 7 | 2016-12-15 | 2016-12-18 | 2600d |  | Roi [50%] |
| 9 | 1.2 | **Análisis del sistema y requisitos** | 5d? | 2016-12-11 | 2016-12-22 | 5 | 2016-12-11 | 2016-12-22 | 2600d |  |  |
| 10 | 1.2.1 | Análisis de requisitos | 2.67d? | 2016-12-11 | 2016-12-18 |  | 2016-12-11 | 2016-12-18 | 2911.11d |  | Roi [50%] |
| 11 | 1.2.2 | Especificación requisitos | 1d? | 2016-12-18 | 2016-12-20 | 8 | 2016-12-18 | 2016-12-20 | 2600d |  | Roi |
| 12 | 1.2.3 | Casos de uso | 1d? | 2016-12-20 | 2016-12-22 | 11 | 2016-12-20 | 2016-12-22 | 2600d |  | Roi |
| 13 | 1.3 | **Incremento1: Análisis de tecnologías** | 7.67d? | 2016-12-22 | 2017-01-10 | 9 | 2016-12-22 | 2017-01-10 | 2600d |  |  |
| 14 | 1.3.1 | Estudio de tecnologías disponibles | 1.33d? | 2016-12-22 | 2016-12-25 |  | 2016-12-22 | 2016-12-25 | 2600d |  | Roi |
| 15 | 1.3.2 | **Pruebas** | 6d? | 2016-12-25 | 2017-01-08 | 14 | 2016-12-25 | 2017-01-08 | 2600d |  |  |
| 16 | 1.3.2.1 | IMU | 2d? | 2016-12-25 | 2017-01-01 |  | 2016-12-25 | 2017-01-01 | 2600d |  | Roi |
| 17 | 1.3.2.2 | ARToolkit Sdk | 2d? | 2017-01-01 | 2017-01-03 | 16 | 2017-01-01 | 2017-01-03 | 2600d |  | Roi |
| 18 | 1.3.2.3 | Vuforia Sdk | 2d? | 2017-01-05 | 2017-01-08 | 17 | 2017-01-05 | 2017-01-08 | 2600d |  | Roi |
| 19 | 1.3.3 | Elección de tecnología | 0.33d? | 2017-01-08 | 2017-01-10 | 15 | 2017-01-08 | 2017-01-10 | 2600d |  | Roi |
| 20 | 1.4 | **Incremento 2: Sistema de ubicación** | 38.5d? | 2017-01-10 | 2017-04-13 | 13 | 2017-01-10 | 2017-04-13 |  |  |  |
| 21 | 1.4.1 | Configurar proyecto | 0.67d? | 2017-01-10 | 2017-01-10 |  | 2017-01-10 | 2017-01-10 | 2600d |  | Roi |
| 22 | 1.4.2 | RF04: Ubicar y orientar dispositivo | 15.5d? | 2017-03-01 | 2017-04-06 | 21 | 2017-03-01 | 2017-04-06 |  | start no earlier than 2017-03-01 | Roi |
| 23 | 1.4.3 | RF05: Seleccionar ubicación actual | 0.83d? | 2017-04-06 | 2017-04-09 | 22 | 2017-04-06 | 2017-04-09 |  |  | Roi |
| 24 | 1.4.4 | RF06: Listar ubicaciones | 2d? | 2017-04-09 | 2017-04-13 | 23 | 2017-04-09 | 2017-04-13 |  |  | Roi |

| ID | WBS | Task | Duration | Start | Finish | Predecessors | Baseline start | Baseline finish | Resources |
| --- | --- | --- | --- | --- | --- | --- | --- | --- | --- |
| 25 | 1.5 | **Incremento3: Subsistema de dibujado** | 13.33d? | 2017-04-13 | 2017-05-14 | 20 | 2017-05-09 | 2017-06-11 |  |
| 26 | 1.5.1 | **RF01: Dibujar entorno AR** | 8.5d? | 2017-04-13 | 2017-05-02 |  | 2017-05-09 | 2017-05-28 |  |
| 27 | 1.5.1.1 | RF1.1: Mostrar cámara de fondo | 2.67d? | 2017-04-13 | 2017-04-18 |  | 2017-05-09 | 2017-05-14 | Roi |
| 28 | 1.5.1.2 | RF1.2: Dibujar espacio virtual | 5.83d? | 2017-04-20 | 2017-05-02 | 27 | 2017-05-16 | 2017-05-28 | Roi |
| 29 | 1.5.2 | RF02: Dibujar obj 3D dinámicos | 3d? | 2017-05-02 | 2017-05-09 | 26 | 2017-05-28 | 2017-06-04 | Roi |
| 30 | 1.5.3 | RF03: Dibujar obj 3D estáticos | 1.83d? | 2017-05-09 | 2017-05-14 | 29 | 2017-06-04 | 2017-06-11 | Roi |
| 31 | 1.6 | **Incremento4: Subsistema obj virtuales** | 8.67d? | 2017-05-14 | 2017-06-04 | 25 | 2017-06-11 | 2017-06-29 |  |
| 32 | 1.6.1 | RF11: Configurar obj virt visibles en AR | 2d? | 2017-05-14 | 2017-05-18 |  | 2017-06-11 | 2017-06-13 | Roi |
| 33 | 1.6.2 | RF12: Cargar obj. virt. din. via Web Rest | 4d? | 2017-05-18 | 2017-05-28 | 32 | 2017-06-13 | 2017-06-25 | Roi |
| 34 | 1.6.3 | RF14: Listar objetos virtuales | 1.67d? | 2017-05-28 | 2017-06-01 | 33 | 2017-06-25 | 2017-06-27 | Roi |
| 35 | 1.6.4 | RF15: Eliminar objeto virtual | 1d? | 2017-06-01 | 2017-06-04 | 34 | 2017-06-27 | 2017-06-29 | Roi |
| 36 | 1.7 | **Incremento 5: Ubicacion2, Obj,Virt2.** | 14d? | 2017-06-04 | 2017-07-06 | 31 | 2017-06-29 | 2017-08-01 |  |
| 37 | 1.7.1 | RF07: Importar/Exportar ubicación | 4d? | 2017-06-04 | 2017-06-13 |  | 2017-06-29 | 2017-07-09 | Roi |
| 38 | 1.7.2 | RF08: Crear nueva ubicación | 2d? | 2017-06-13 | 2017-06-18 | 37 | 2017-07-09 | 2017-07-13 | Roi |
| 39 | 1.7.3 | RF09: Configurar obj. virt. ubicación | 7.33d? | 2017-06-18 | 2017-07-04 | 38 | 2017-07-13 | 2017-07-30 | Roi |
| 40 | 1.7.4 | RF10: Eliminar ubicación | 0.67d? | 2017-07-04 | 2017-07-06 | 39 | 2017-07-30 | 2017-08-01 | Roi |
| 41 | 1.7.5 | RF13: Cargar objeto virtual estático | 0d? | 2017-07-06 | 2017-07-06 | 40 | 2017-08-01 | 2017-08-01 | Roi |
